# Obele Re-entry Project

Schedule from MS Project, 2017-02-09 to 2017-04-14, A marks actual dates.
Shell

## Calendars

- Standard: Mon-Sun 08:00-12:00, 13:00-17:00.

## Resources

| Resource |
| --- |
| Required for IG |
| Required for min flow |
| OPS |
| OPS1 |
| CWI |

## Schedule

| ID | WBS | Task | Type | Duration | Start | Finish | Predecessors | Complete | Remaining | Total slack | Free slack | Constraint | Remarks |
| --- | --- | --- | --- | --- | --- | --- | --- | --- | --- | --- | --- | --- | --- |
| 1 | 1 | **Premobilisation** |  | 28d? | 2017-02-09 A | 2017-03-08 |  | 2% | 27.43d? | 36.95d |  |  |  |
| 2 | 1.1 | Security Clearance | manual | 1d | 2017-02-09 A | 2017-02-09 A |  | 100% |  |  |  |  |  |
| 3 | 1.2 | Set up Re-entry Team |  | 1d | 2017-02-10 | 2017-02-10 | 2 |  |  | 62.95d |  |  |  |
| 4 | 1.3 | Hold kick off meeting, review & update plan | manual | 1d | 2017-02-27 | 2017-02-27 |  |  |  |  |  | start no earlier than 2017-02-27 |  |
| 5 | 1.4 | **Generate Asset Integrity Verification AIV checksheets** |  | 0.5d | 2017-02-27 | 2017-02-27 |  |  |  | 22.5d | 0d |  |  |
| 6 | 1.4.1 | Wells |  | 0.5d | 2017-02-27 | 2017-02-27 | 4SS |  |  | 22.5d |  |  |  |
| 7 | 1.4.2 | Flowlines |  | 0.5d | 2017-02-27 | 2017-02-27 | 4SS |  |  | 22.5d |  |  |  |
| 8 | 1.4.3 | Inlet Manifold |  | 0.5d | 2017-02-27 | 2017-02-27 | 4SS |  |  | 22.5d |  |  |  |
| 9 | 1.4.4 | Manual isolation valves |  | 0.5d | 2017-02-27 | 2017-02-27 | 4SS |  |  | 22.5d |  |  |  |
| 10 | 1.4.5 | Control valves |  | 0.5d | 2017-02-27 | 2017-02-27 | 4SS |  |  | 22.5d |  |  |  |
| 11 | 1.4.6 | Shutdown valves |  | 0.5d | 2017-02-27 | 2017-02-27 | 4SS |  |  | 22.5d |  |  |  |
| 12 | 1.4.7 | Relief valves |  | 0.5d | 2017-02-27 | 2017-02-27 | 4SS |  |  | 22.5d |  |  |  |
| 13 | 1.4.8 | Instrument gas vessels & distribution |  | 0.5d | 2017-02-27 | 2017-02-27 | 4SS |  |  | 22.5d |  |  |  |
| 14 | 1.4.9 | Instrumentation |  | 0.5d | 2017-02-27 | 2017-02-27 | 4SS |  |  | 22.5d |  |  |  |
| 15 | 1.4.10 | Robertshaw Panel |  | 0.5d | 2017-02-27 | 2017-02-27 | 4SS |  |  | 22.5d |  |  |  |
| 16 | 1.4.11 | Vessels |  | 0.5d | 2017-02-27 | 2017-02-27 | 4SS |  |  | 22.5d |  |  |  |
| 17 | 1.4.12 | Piping |  | 0.5d | 2017-02-27 | 2017-02-27 | 4SS |  |  | 22.5d |  |  |  |
| 18 | 1.4.13 | Export Pumps |  | 0.5d | 2017-02-27 | 2017-02-27 | 4SS |  |  | 22.5d |  |  |  |
| 19 | 1.4.14 | PD Meters |  | 0.5d | 2017-02-27 | 2017-02-27 | 4SS |  |  | 22.5d |  |  |  |
| 20 | 1.4.15 | Gas Genset |  | 0.5d | 2017-02-27 | 2017-02-27 | 4SS |  |  | 22.5d |  |  |  |
| 21 | 1.4.16 | Diesel Genset |  | 0.5d | 2017-02-27 | 2017-02-27 | 4SS |  |  | 22.5d |  |  | Include diesel tank |
| 22 | 1.4.17 | LV Distribution Board |  | 0.5d | 2017-02-27 | 2017-02-27 | 4SS |  |  | 22.5d |  |  |  |
| 23 | 1.4.18 | Station lighting & Photocell |  | 0.5d | 2017-02-27 | 2017-02-27 | 4SS |  |  | 22.5d |  |  |  |
| 24 | 1.4.19 | Drains System & Saver pit |  | 0.5d | 2017-02-27 | 2017-02-27 | 4SS |  |  | 22.5d |  |  | Include CP pumps |
| 25 | 1.4.20 | Flare and flare bund |  | 0.5d | 2017-02-27 | 2017-02-27 | 4SS |  |  | 22.5d |  |  | Include USM |
| 26 | 1.4.21 | Chemical injection |  | 0.5d | 2017-02-27 | 2017-02-27 | 4SS |  |  | 22.5d |  |  | pumps & piping |
| 27 | 1.4.22 | Cathodic Protection |  | 0.5d | 2017-02-27 | 2017-02-27 | 4SS |  |  | 22.5d |  |  |  |
| 28 | 1.4.23 | Water Tank and mains distribution |  | 0.5d | 2017-02-27 | 2017-02-27 | 4SS |  |  | 22.5d |  |  |  |
| 29 | 1.4.24 | Civil Structures |  | 0.5d | 2017-02-27 | 2017-02-27 | 4SS |  |  | 22.5d |  |  |  |
| 30 | 1.4.25 | Delivery & trunklines |  | 0.5d | 2017-02-27 | 2017-02-27 | 4SS |  |  | 22.5d |  |  |  |
| 31 | 1.4.26 | Other |  | 0.5d | 2017-02-27 | 2017-02-27 | 4SS |  |  | 22.5d |  |  |  |

| ID | WBS | Task | Type | Duration | Start | Finish | Predecessors | Total slack | Free slack | Remarks |
| --- | --- | --- | --- | --- | --- | --- | --- | --- | --- | --- |
| 32 | 1.5 | **Generate Integrity Assurance records checklist** |  | 2d? | 2017-02-27 | 2017-02-28 |  | 8d | 0d |  |
| 33 | 1.5.1 | Verify IA records status & gaps - check for expired MoCs, deviations, FSR etc |  | 1d | 2017-02-27 | 2017-02-27 | 4SS | 9d |  |  |
| 34 | 1.5.2 | Wells - APM, Ops-WIT etc |  | 1d | 2017-02-27 | 2017-02-27 | 4SS | 9d |  |  |
| 35 | 1.5.3 | FIMS - flowlines |  | 1d | 2017-02-27 | 2017-02-27 | 4SS | 9d |  |  |
| 36 | 1.5.4 | PVRV Status |  | 1d | 2017-02-27 | 2017-02-27 | 4SS | 9d |  |  |
| 37 | 1.5.5 | Piping UT status |  | 1d | 2017-02-27 | 2017-02-27 | 4SS | 9d |  |  |
| 38 | 1.5.6 | Desanding |  | 1d? | 2017-02-27 | 2017-02-27 | 4SS | 9d |  |  |
| 39 | 1.5.7 | SAP CMMS / Maintenance Plans |  | 2d | 2017-02-27 | 2017-02-28 | 4SS | 8d |  |  |
| 40 | 1.5.8 | Delivery & Trunklines status |  | 1d | 2017-02-27 | 2017-02-27 | 4SS | 9d |  | Engage pipelines team |
| 41 | 1.5.9 | Env Compliance Monitoring status |  | 1d | 2017-02-27 | 2017-02-27 | 4SS | 9d |  |  |
| 42 | 1.5.10 | ESD Test status |  | 1d | 2017-02-27 | 2017-02-27 | 4SS | 9d |  |  |
| 43 | 1.5.11 | EX-rating inspection |  | 1d | 2017-02-27 | 2017-02-27 | 4SS | 9d |  |  |
| 44 | 1.5.12 | Earth Bonding survey |  | 1d? | 2017-02-27 | 2017-02-27 | 4SS | 9d |  |  |
| 45 | 1.5.13 | ER drills & other HSE requirements |  | 1d | 2017-02-27 | 2017-02-27 | 4SS | 9d |  |  |
| 46 | 1.5.14 | Permits & Consents in-place |  | 1d | 2017-02-27 | 2017-02-27 | 4SS | 9d |  |  |
| 47 | 1.6 | **WRM Status Checks** |  | 3d | 2017-02-27 | 2017-03-01 |  | 43.95d |  |  |
| 48 | 1.6.1 | DPR Allowables |  | 1d | 2017-02-27 | 2017-02-27 | 4SS | 45.95d |  |  |
| 49 | 1.6.2 | Start up beans & sequence |  | 3d | 2017-02-27 | 2017-03-01 | 4SS | 43.95d |  |  |
| 50 | 1.7 | **Community Pre-engagements** |  | 5d | 2017-02-27 | 2017-03-03 |  | 0d |  |  |
| 51 | 1.7.1 | Engage community representatives |  | 5d | 2017-02-27 | 2017-03-03 | 4SS | 0d |  |  |
| 52 | 1.7.2 | Engage Community Contractors |  | 4d | 2017-02-27 | 2017-03-02 | 4SS | 42.95d |  | Surveillance, Attendants & Support, Grasscutting |
| 53 | 1.8 | Plan AIV site visits |  | 2d | 2017-03-03 | 2017-03-04 | 51FF+1d | 0d |  |  |
| 54 | 1.9 | Make 1st AIV Visit | milestone | 0d | 2017-03-05 | 2017-03-05 | 53FS+1d | 0d |  |  |
| 55 | 1.10 | Complete AIV visits |  | 3d | 2017-03-06 | 2017-03-08 | 54 | 0d |  | Day 1- Ops, Day 2- Mtc, Day 3- General |

| ID | WBS | Task | Duration | Start | Finish | Predecessors | Total slack | Resources | Work | Remarks |
| --- | --- | --- | --- | --- | --- | --- | --- | --- | --- | --- |
| 56 | 2 | **Asset Integrity Verification** | 3d? | 2017-03-06 | 2017-03-08 |  | 0d |  | 80h |  |
| 57 | 2.1 | **Wells** | 2d | 2017-03-06 | 2017-03-07 |  | 1d |  | 40h |  |
| 58 | 2.1.1 | HP well 1 | 1d | 2017-03-06 | 2017-03-06 | 55SS | 2d | OPS1 | 8h | Required for IG |
| 59 | 2.1.2 | HP well 2 | 1d | 2017-03-06 | 2017-03-06 | 55SS | 2d | OPS1 | 8h |  |
| 60 | 2.1.3 | LP well 1 | 1d | 2017-03-06 | 2017-03-06 | 55SS | 2d | OPS1 | 8h | Required for min flow |
| 61 | 2.1.4 | LP well 2 | 1d | 2017-03-07 | 2017-03-07 | 55SS+1d | 1d | OPS1 | 8h |  |
| 62 | 2.1.5 | Other Well | 1d | 2017-03-07 | 2017-03-07 | 55SS+1d | 1d | OPS1 | 8h |  |
| 63 | 2.2 | **Flowlines** | 2d | 2017-03-06 | 2017-03-07 |  | 1d |  | 40h |  |
| 64 | 2.2.1 | Well 1 | 1d | 2017-03-06 | 2017-03-06 | 55SS | 2d | OPS1 | 8h |  |
| 65 | 2.2.2 | Well 2 | 1d | 2017-03-06 | 2017-03-06 | 55SS | 2d | OPS1 | 8h |  |
| 66 | 2.2.3 | Well 3 | 1d | 2017-03-06 | 2017-03-06 | 55SS | 2d | OPS1 | 8h |  |
| 67 | 2.2.4 | Well 4 | 1d | 2017-03-07 | 2017-03-07 | 55SS+1d | 1d | OPS1 | 8h |  |
| 68 | 2.2.5 | other Well | 1d | 2017-03-07 | 2017-03-07 | 55SS+1d | 1d | OPS1 | 8h |  |
| 69 | 2.3 | **Inlet Manifold** | 1d | 2017-03-06 | 2017-03-06 |  | 2d |  |  |  |
| 70 | 2.3.1 | Plug valves | 1d | 2017-03-06 | 2017-03-06 | 55SS | 2d |  |  |  |
| 71 | 2.3.2 | Header piping | 1d | 2017-03-06 | 2017-03-06 | 55SS | 2d |  |  |  |
| 72 | 2.3.3 | Manual isolation valves | 1d | 2017-03-06 | 2017-03-06 | 55SS | 2d |  |  |  |
| 73 | 2.3.4 | Master Shutdown Valves | 1d | 2017-03-06 | 2017-03-06 | 55SS | 2d |  |  |  |
| 74 | 2.3.5 | Guages | 1d | 2017-03-06 | 2017-03-06 | 55SS | 2d |  |  |  |
| 75 | 2.3.6 | Relief valves | 1d | 2017-03-06 | 2017-03-06 | 55SS | 2d |  |  |  |
| 76 | 2.4 | **Vessels** | 1d? | 2017-03-06 | 2017-03-06 |  | 2d |  |  |  |
| 77 | 2.4.1 | **HP Separator** | 1d? | 2017-03-06 | 2017-03-06 |  | 2d |  |  |  |
| 78 | 2.4.1.1 | Manual isolation valves | 1d | 2017-03-06 | 2017-03-06 | 55SS | 2d |  |  |  |
| 79 | 2.4.1.2 | Level indicator, sight glass | 1d? | 2017-03-06 | 2017-03-06 | 55SS | 2d |  |  |  |
| 80 | 2.4.1.3 | Level control valve | 1d? | 2017-03-06 | 2017-03-06 | 55SS | 2d |  |  |  |
| 81 | 2.4.1.4 | Pressure guages | 1d? | 2017-03-06 | 2017-03-06 | 55SS | 2d |  |  |  |
| 82 | 2.4.1.5 | Relief valves | 1d? | 2017-03-06 | 2017-03-06 | 55SS | 2d |  |  |  |
| 83 | 2.4.1.6 | Othe device | 1d? | 2017-03-06 | 2017-03-06 | 55SS | 2d |  |  |  |

| ID | WBS | Task | Duration | Start | Finish | Predecessors | Total slack |
| --- | --- | --- | --- | --- | --- | --- | --- |
| 84 | 2.4.2 | **Test Separator** | 1d? | 2017-03-06 | 2017-03-06 |  | 2d |
| 85 | 2.4.2.1 | Rotron meter | 1d? | 2017-03-06 | 2017-03-06 | 55SS | 2d |
| 86 | 2.4.2.2 | Daniel Orifice Fitting | 1d? | 2017-03-06 | 2017-03-06 | 55SS | 2d |
| 87 | 2.4.2.3 | Manual isolation valves | 1d? | 2017-03-06 | 2017-03-06 | 55SS | 2d |
| 88 | 2.4.2.4 | Level indicator, sight glass | 1d? | 2017-03-06 | 2017-03-06 | 55SS | 2d |
| 89 | 2.4.2.5 | Level control valve | 1d | 2017-03-06 | 2017-03-06 | 55SS | 2d |
| 90 | 2.4.2.6 | Pressure guages | 1d? | 2017-03-06 | 2017-03-06 | 55SS | 2d |
| 91 | 2.4.2.7 | Relief valves | 1d? | 2017-03-06 | 2017-03-06 | 55SS | 2d |
| 92 | 2.4.2.8 | Other Device | 1d? | 2017-03-06 | 2017-03-06 | 55SS | 2d |
| 93 | 2.4.3 | **LP Separator** | 1d? | 2017-03-06 | 2017-03-06 |  | 2d |
| 94 | 2.4.3.1 | Manual isolation valves | 1d | 2017-03-06 | 2017-03-06 | 55SS | 2d |
| 95 | 2.4.3.2 | Level indicator, sight glass | 1d | 2017-03-06 | 2017-03-06 | 55SS | 2d |
| 96 | 2.4.3.3 | Level control valve | 1d | 2017-03-06 | 2017-03-06 | 55SS | 2d |
| 97 | 2.4.3.4 | Pressure guages | 1d? | 2017-03-06 | 2017-03-06 | 55SS | 2d |
| 98 | 2.4.3.5 | Relief valves | 1d? | 2017-03-06 | 2017-03-06 | 55SS | 2d |
| 99 | 2.4.3.6 | Othe device | 1d | 2017-03-06 | 2017-03-06 | 55SS | 2d |
| 100 | 2.4.4 | **Surge Vessel** | 1d? | 2017-03-06 | 2017-03-06 |  | 2d |
| 101 | 2.4.4.1 | Manual isolation valves | 1d | 2017-03-06 | 2017-03-06 | 55SS | 2d |
| 102 | 2.4.4.2 | Level indicator, sight glass | 1d | 2017-03-06 | 2017-03-06 | 55SS | 2d |
| 103 | 2.4.4.3 | Level control valve | 1d | 2017-03-06 | 2017-03-06 | 55SS | 2d |
| 104 | 2.4.4.4 | Pressure guages | 1d? | 2017-03-06 | 2017-03-06 | 55SS | 2d |
| 105 | 2.4.4.5 | Pump suction header | 1d? | 2017-03-06 | 2017-03-06 | 55SS | 2d |
| 106 | 2.4.4.6 | Relief valves | 1d? | 2017-03-06 | 2017-03-06 | 55SS | 2d |
| 107 | 2.4.4.7 | SV recirculation system | 1d | 2017-03-06 | 2017-03-06 | 55SS | 2d |

| ID | WBS | Task | Duration | Start | Finish | Predecessors | Total slack |
| --- | --- | --- | --- | --- | --- | --- | --- |
| 108 | 2.4.5 | **FLKO Vessel** | 1d? | 2017-03-06 | 2017-03-06 |  | 2d |
| 109 | 2.4.5.1 | Manual isolation valves | 1d? | 2017-03-06 | 2017-03-06 | 55SS | 2d |
| 110 | 2.4.5.2 | Level indicator, sight glass | 1d? | 2017-03-06 | 2017-03-06 | 55SS | 2d |
| 111 | 2.4.5.3 | Level control valve | 1d? | 2017-03-06 | 2017-03-06 | 55SS | 2d |
| 112 | 2.4.5.4 | Other device | 1d? | 2017-03-06 | 2017-03-06 | 55SS | 2d |
| 113 | 2.5 | **Export Pumps & Metering** | 1d? | 2017-03-07 | 2017-03-07 |  | 1d |
| 114 | 2.5.1 | **EP1** | 1d? | 2017-03-07 | 2017-03-07 |  | 1d |
| 115 | 2.5.1.1 | Visual checks | 1d? | 2017-03-07 | 2017-03-07 | 55SS+1d | 1d |
| 116 | 2.5.1.2 | Relief valves | 1d? | 2017-03-07 | 2017-03-07 | 55SS+1d | 1d |
| 117 | 2.5.1.3 | Other checks | 1d? | 2017-03-07 | 2017-03-07 | 55SS+1d | 1d |
| 118 | 2.5.2 | **EP 2** | 1d? | 2017-03-07 | 2017-03-07 |  | 1d |
| 119 | 2.5.2.1 | Visual checks | 1d | 2017-03-07 | 2017-03-07 | 55SS+1d | 1d |
| 120 | 2.5.2.2 | Relief valves | 1d? | 2017-03-07 | 2017-03-07 | 55SS+1d | 1d |
| 121 | 2.5.2.3 | Other checks | 1d | 2017-03-07 | 2017-03-07 | 55SS+1d | 1d |
| 122 | 2.5.3 | **EP 3** | 1d? | 2017-03-07 | 2017-03-07 |  | 1d |
| 123 | 2.5.3.1 | Visual checks | 1d | 2017-03-07 | 2017-03-07 | 55SS+1d | 1d |
| 124 | 2.5.3.2 | Relief valves | 1d? | 2017-03-07 | 2017-03-07 | 55SS+1d | 1d |
| 125 | 2.5.3.3 | Other checks | 1d | 2017-03-07 | 2017-03-07 | 55SS+1d | 1d |
| 126 | 2.5.4 | **Export Metering** | 1d? | 2017-03-07 | 2017-03-07 |  | 1d |
| 127 | 2.5.4.1 | PD Meter 1 | 1d? | 2017-03-07 | 2017-03-07 | 55SS+1d | 1d |
| 128 | 2.5.4.2 | PD Meter 2 | 1d? | 2017-03-07 | 2017-03-07 | 55SS+1d | 1d |
| 129 | 2.5.4.3 | Manual Isolation valves | 1d? | 2017-03-07 | 2017-03-07 | 55SS+1d | 1d |
| 130 | 2.5.4.4 | Water cut Meter | 1d? | 2017-03-07 | 2017-03-07 | 55SS+1d | 1d |
| 131 | 2.5.4.5 | Other device | 1d? | 2017-03-07 | 2017-03-07 | 55SS+1d | 1d |

| ID | WBS | Task | Duration | Start | Finish | Predecessors | Total slack |
| --- | --- | --- | --- | --- | --- | --- | --- |
| 132 | 2.6 | **Chemical Injection** | 1d? | 2017-03-07 | 2017-03-07 |  | 1d |
| 133 | 2.6.1 | Injection pump and piping | 1d? | 2017-03-07 | 2017-03-07 | 55SS+1d | 1d |
| 134 | 2.6.2 | Chemical tank & stock | 1d? | 2017-03-07 | 2017-03-07 | 55SS+1d | 1d |
| 135 | 2.7 | **Gas Headers** | 1d? | 2017-03-07 | 2017-03-07 |  | 1d |
| 136 | 2.7.1 | HP PCV | 1d? | 2017-03-07 | 2017-03-07 | 55SS+1d | 1d |
| 137 | 2.7.2 | HP Header manual valves | 1d? | 2017-03-07 | 2017-03-07 | 55SS+1d | 1d |
| 138 | 2.7.3 | LP PCV | 1d? | 2017-03-07 | 2017-03-07 | 55SS+1d | 1d |
| 139 | 2.7.4 | LP Header manual valves | 1d? | 2017-03-07 | 2017-03-07 | 55SS+1d | 1d |
| 140 | 2.7.5 | Flare line low point drain | 1d? | 2017-03-07 | 2017-03-07 | 55SS+1d | 1d |
| 141 | 2.8 | **Flare** | 2d? | 2017-03-06 | 2017-03-07 |  | 1d |
| 142 | 2.8.1 | Venturi | 1d? | 2017-03-06 | 2017-03-06 | 55SS | 2d |
| 143 | 2.8.2 | Flare tip | 1d? | 2017-03-06 | 2017-03-06 | 55SS | 2d |
| 144 | 2.8.3 | Piping | 1d? | 2017-03-06 | 2017-03-06 | 55SS | 2d |
| 145 | 2.8.4 | Pilot | 1d? | 2017-03-06 | 2017-03-06 | 55SS | 2d |
| 146 | 2.8.5 | USM | 1d? | 2017-03-07 | 2017-03-07 | 55SS+1d | 1d |
| 147 | 2.8.6 | Bundwall integrity | 1d? | 2017-03-06 | 2017-03-06 | 55SS | 2d |
| 148 | 2.9 | **Station Safeguarding Systems** | 1d? | 2017-03-07 | 2017-03-07 |  | 1d |
| 149 | 2.9.1 | Robertshaw Panel | 1d? | 2017-03-07 | 2017-03-07 | 55SS+1d | 1d |
| 150 | 2.9.2 | **Amot / Trip switches** | 1d? | 2017-03-07 | 2017-03-07 |  | 1d |
| 151 | 2.9.2.1 | HP PSHH | 1d? | 2017-03-07 | 2017-03-07 | 55SS+1d | 1d |
| 152 | 2.9.2.2 | LP PSHH | 1d? | 2017-03-07 | 2017-03-07 | 55SS+1d | 1d |
| 153 | 2.9.2.3 | SV PSHH | 1d? | 2017-03-07 | 2017-03-07 | 55SS+1d | 1d |
| 154 | 2.9.2.4 | Pumpline PSHH | 1d? | 2017-03-07 | 2017-03-07 | 55SS+1d | 1d |
| 155 | 2.9.2.5 | Pumpline PSLL | 1d? | 2017-03-07 | 2017-03-07 | 55SS+1d | 1d |
| 156 | 2.9.2.6 | IA PSLL | 1d? | 2017-03-07 | 2017-03-07 | 55SS+1d | 1d |
| 157 | 2.9.2.7 | Test Sep LSH | 1d? | 2017-03-07 | 2017-03-07 | 55SS+1d | 1d |
| 158 | 2.9.2.8 | SV LSHH | 1d? | 2017-03-07 | 2017-03-07 | 55SS+1d | 1d |
| 159 | 2.9.2.9 | FLKO LSHH | 1d? | 2017-03-07 | 2017-03-07 | 55SS+1d | 1d |
| 160 | 2.9.3 | Fusible plugs | 1d? | 2017-03-07 | 2017-03-07 | 55SS+1d | 1d |
| 161 | 2.9.4 | QAW valve - instrument gas | 1d? | 2017-03-07 | 2017-03-07 | 55SS+1d | 1d |
| 162 | 2.9.5 | QAW valve - fuel gas_EP pumps | 1d? | 2017-03-07 | 2017-03-07 | 55SS+1d | 1d |
| 163 | 2.9.6 | QAW valve - fuel gas_Gas set | 1d | 2017-03-07 | 2017-03-07 | 55SS+1d | 1d |
| 164 | 2.9.7 | ESD Call Points | 1d? | 2017-03-07 | 2017-03-07 | 55SS+1d | 1d |

| ID | WBS | Task | Duration | Start | Finish | Predecessors | Total slack |
| --- | --- | --- | --- | --- | --- | --- | --- |
| 165 | 2.10 | **Instrument & Fuel Gas System** | 1d? | 2017-03-07 | 2017-03-07 |  | 1d |
| 166 | 2.10.1 | Piping Check | 1d? | 2017-03-07 | 2017-03-07 | 55SS+1d | 1d |
| 167 | 2.10.2 | Utility Gas Scrubber | 1d? | 2017-03-07 | 2017-03-07 | 55SS+1d | 1d |
| 168 | 2.10.3 | Instrument Gas cooler | 1d? | 2017-03-07 | 2017-03-07 | 55SS+1d | 1d |
| 169 | 2.10.4 | Instrument Gas Scrubber | 1d? | 2017-03-07 | 2017-03-07 | 55SS+1d | 1d |
| 170 | 2.10.5 | Instrument Gas Header & Distribution | 1d? | 2017-03-07 | 2017-03-07 | 55SS+1d | 1d |
| 171 | 2.10.6 | Instrument gas filter regulators | 1d? | 2017-03-07 | 2017-03-07 | 55SS+1d | 1d |
| 172 | 2.10.7 | Relief valves | 1d? | 2017-03-07 | 2017-03-07 | 55SS+1d | 1d |
| 173 | 2.10.8 | Fuel gas 'Big Joe's | 1d? | 2017-03-07 | 2017-03-07 | 55SS+1d | 1d |
| 174 | 2.11 | **Power Generation & LV DB** | 1d? | 2017-03-07 | 2017-03-07 |  | 1d |
| 175 | 2.11.1 | Diesel Genset | 1d? | 2017-03-07 | 2017-03-07 | 55SS+1d | 1d |
| 176 | 2.11.2 | Gas Genset | 1d? | 2017-03-07 | 2017-03-07 | 55SS+1d | 1d |
| 177 | 2.11.3 | LV Distribution Board | 1d? | 2017-03-07 | 2017-03-07 | 55SS+1d | 1d |
| 178 | 2.11.4 | Station Lighting & Photocell | 1d? | 2017-03-07 | 2017-03-07 | 55SS+1d | 1d |
| 179 | 2.12 | **Drains System & Saver pit** | 1d? | 2017-03-07 | 2017-03-07 |  | 1d |
| 180 | 2.12.1 | Open drains | 1d? | 2017-03-07 | 2017-03-07 | 55SS+1d | 1d |
| 181 | 2.12.2 | Saver pit | 1d? | 2017-03-07 | 2017-03-07 | 55SS+1d | 1d |
| 182 | 2.12.3 | CP Pumps | 1d? | 2017-03-07 | 2017-03-07 | 55SS+1d | 1d |
| 183 | 2.12.4 | Sampling point | 1d? | 2017-03-07 | 2017-03-07 | 55SS+1d | 1d |
| 184 | 2.13 | **Cathodic Protection** | 1d? | 2017-03-08 | 2017-03-08 |  | 0d |
| 185 | 2.13.1 | CP Transformer | 1d? | 2017-03-08 | 2017-03-08 | 55SS+2d | 0d |
| 186 | 2.13.2 | CP cables and connections | 1d? | 2017-03-08 | 2017-03-08 | 55SS+2d | 0d |
| 187 | 2.13.3 | Ground bed | 1d? | 2017-03-08 | 2017-03-08 | 55SS+2d | 0d |
| 188 | 2.14 | **Station Civil Structures** | 1d? | 2017-03-08 | 2017-03-08 |  | 0d |
| 189 | 2.14.1 | Guards hut & Toilets | 1d? | 2017-03-08 | 2017-03-08 | 55SS+2d | 0d |
| 190 | 2.14.2 | Water tank and mains distribution | 1d? | 2017-03-08 | 2017-03-08 | 55SS+2d | 0d |
| 191 | 2.14.3 | Pump House and Gantry Cranes | 1d? | 2017-03-08 | 2017-03-08 | 55SS+2d | 0d |
| 192 | 2.14.4 | Generator House | 1d? | 2017-03-08 | 2017-03-08 | 55SS+2d | 0d |

| ID | WBS | Task | Duration | Start | Finish | Predecessors | Total slack | Remarks |
| --- | --- | --- | --- | --- | --- | --- | --- | --- |
| 193 | 2.15 | **Chemical Shed** | 1d? | 2017-03-08 | 2017-03-08 |  | 0d |  |
| 194 | 2.15.1 | Building state | 1d? | 2017-03-08 | 2017-03-08 | 55SS+2d | 0d |  |
| 195 | 2.15.2 | Inventory | 1d? | 2017-03-08 | 2017-03-08 | 55SS+2d | 0d |  |
| 196 | 2.15.3 | Validity & certification | 1d? | 2017-03-08 | 2017-03-08 | 55SS+2d | 0d |  |
| 197 | 2.15.4 | SHOC Cards | 1d? | 2017-03-08 | 2017-03-08 | 55SS+2d | 0d |  |
| 198 | 2.16 | **Delivery & trunklines** | 1d? | 2017-03-08 | 2017-03-08 |  | 0d |  |
| 199 | 2.16.1 | Pipeline integrity | 1d? | 2017-03-08 | 2017-03-08 | 55SS+2d | 0d |  |
| 200 | 2.16.2 | De-isolation status | 1d? | 2017-03-08 | 2017-03-08 | 55SS+2d | 0d |  |
| 201 | 2.17 | **Fire Hut & Fire fighting equipment** | 1d? | 2017-03-08 | 2017-03-08 |  | 0d |  |
| 202 | 2.17.1 | Building state | 1d? | 2017-03-08 | 2017-03-08 | 55SS+2d | 0d |  |
| 203 | 2.17.2 | Inventory | 1d? | 2017-03-08 | 2017-03-08 | 55SS+2d | 0d |  |
| 204 | 2.17.3 | Validity & certification | 1d? | 2017-03-08 | 2017-03-08 | 55SS+2d | 0d |  |
| 205 | 2.18 | **Spill Response Caravan** | 1d? | 2017-03-08 | 2017-03-08 |  | 0d |  |
| 206 | 2.18.1 | Building state | 1d? | 2017-03-08 | 2017-03-08 | 55SS+2d | 0d |  |
| 207 | 2.18.2 | Inventory | 1d? | 2017-03-08 | 2017-03-08 | 55SS+2d | 0d |  |
| 208 | 2.18.3 | Validity & certification | 1d? | 2017-03-08 | 2017-03-08 | 55SS+2d | 0d |  |
| 209 | 2.19 | **IT & Communication quipment** | 1d? | 2017-03-08 | 2017-03-08 |  | 0d |  |
| 210 | 2.19.1 | IT checks | 1d? | 2017-03-08 | 2017-03-08 | 55SS+2d | 0d | Request IT to open caravans and inspect their equipment |
| 211 | 2.20 | **Station Environment & Fencing** | 1d? | 2017-03-08 | 2017-03-08 |  | 0d |  |
| 212 | 2.20.1 | Main Access road | 1d? | 2017-03-08 | 2017-03-08 | 55SS+2d | 0d |  |
| 213 | 2.20.2 | Wellhead roads | 1d? | 2017-03-08 | 2017-03-08 | 55SS+2d | 0d |  |
| 214 | 2.20.3 | In-plot roads | 1d? | 2017-03-08 | 2017-03-08 | 55SS+2d | 0d |  |
| 215 | 2.20.4 | Grass cutting | 1d? | 2017-03-08 | 2017-03-08 | 55SS+2d | 0d |  |
| 216 | 2.20.5 | Horticulture & trees | 1d? | 2017-03-08 | 2017-03-08 | 55SS+2d | 0d |  |
| 217 | 2.20.6 | Station Fence & Access Control | 1d? | 2017-03-08 | 2017-03-08 | 55SS+2d | 0d |  |
| 218 | 2.20.7 | Boards, notices, flags & signage | 1d? | 2017-03-08 | 2017-03-08 | 55SS+2d | 0d |  |
| 219 | 2.20.8 | Emergency escape gates | 1d? | 2017-03-08 | 2017-03-08 | 55SS+2d | 0d |  |

| ID | WBS | Task | Duration | Start | Finish | Predecessors | Total slack | Free slack |
| --- | --- | --- | --- | --- | --- | --- | --- | --- |
| 220 | 2.21 | **Instrument Air project equipment** | 1d? | 2017-03-08 | 2017-03-08 |  | 0d |  |
| 221 | 2.21.1 | Project team assessment | 1d? | 2017-03-08 | 2017-03-08 | 55SS+2d | 0d |  |
| 222 | 3 | **Asset Integrity Restoration** | 42d | 2017-02-09 | 2017-03-22 |  | 0d |  |
| 223 | 3.1 | **Wells** | 32d | 2017-02-09 | 2017-03-12 |  | 10d |  |
| 224 | 3.1.1 | HP well 1 | 1d | 2017-03-09 | 2017-03-09 | 56 | 10d | 0d |
| 225 | 3.1.2 | HP well 2 | 1d | 2017-03-10 | 2017-03-10 | 224 | 10d | 0d |
| 226 | 3.1.3 | LP well 1 | 1d | 2017-03-11 | 2017-03-11 | 225 | 10d | 0d |
| 227 | 3.1.4 | LP well 2 | 1d | 2017-03-12 | 2017-03-12 | 226 | 10d |  |
| 228 | 3.1.5 | Other Well | 1d | 2017-02-09 | 2017-02-09 |  | 41d |  |
| 229 | 3.2 | **Flowlines** | 42d | 2017-02-09 | 2017-03-22 |  | 0d |  |
| 230 | 3.2.1 | Well 1 | 8d | 2017-03-09 | 2017-03-16 | 56 | 0d |  |
| 231 | 3.2.2 | Well 2 | 4d | 2017-03-17 | 2017-03-20 | 230 | 0d |  |
| 232 | 3.2.3 | Well 3 | 1d | 2017-03-21 | 2017-03-21 | 231 | 0d |  |
| 233 | 3.2.4 | Well 4 | 1d | 2017-03-22 | 2017-03-22 | 232 | 0d |  |
| 234 | 3.2.5 | other Well | 1d | 2017-02-09 | 2017-02-09 |  | 41d |  |
| 235 | 3.3 | **Inlet Manifold** | 14d | 2017-03-09 | 2017-03-22 |  | 0d |  |
| 236 | 3.3.1 | Plug valves | 2d | 2017-03-09 | 2017-03-10 | 56 | 12d |  |
| 237 | 3.3.2 | Header piping | 1d | 2017-03-09 | 2017-03-09 | 56 | 13d |  |
| 238 | 3.3.3 | Manual isolation valves | 1d | 2017-03-09 | 2017-03-09 | 56 | 13d |  |
| 239 | 3.3.4 | Master Shutdown Valves | 14d | 2017-03-09 | 2017-03-22 | 56 | 0d |  |
| 240 | 3.3.5 | Guages | 7d | 2017-03-09 | 2017-03-15 | 56 | 7d |  |
| 241 | 3.3.6 | Relief valves | 7d | 2017-03-09 | 2017-03-15 | 56 | 7d |  |
| 242 | 3.4 | **Vessels** | 7d | 2017-03-09 | 2017-03-15 |  | 7d |  |
| 243 | 3.4.1 | **HP Separator** | 7d | 2017-03-09 | 2017-03-15 |  | 7d |  |
| 244 | 3.4.1.1 | Manual isolation valves | 1d | 2017-03-09 | 2017-03-09 | 56 | 13d |  |
| 245 | 3.4.1.2 | Level indicator, sight glass | 1d | 2017-03-09 | 2017-03-09 | 56 | 13d |  |
| 246 | 3.4.1.3 | Level control valve | 2d | 2017-03-09 | 2017-03-10 | 56 | 12d |  |
| 247 | 3.4.1.4 | Pressure guages | 7d | 2017-03-09 | 2017-03-15 | 56 | 7d |  |
| 248 | 3.4.1.5 | Relief valves | 7d | 2017-03-09 | 2017-03-15 | 56 | 7d |  |
| 249 | 3.4.1.6 | Othe device | 1d | 2017-03-09 | 2017-03-09 | 56 | 13d |  |

| ID | WBS | Task | Duration | Start | Finish | Predecessors | Total slack |
| --- | --- | --- | --- | --- | --- | --- | --- |
| 250 | 3.4.2 | **Test Separator** | 7d | 2017-03-09 | 2017-03-15 |  | 7d |
| 251 | 3.4.2.1 | Rotron meter | 4d | 2017-03-09 | 2017-03-12 | 56 | 10d |
| 252 | 3.4.2.2 | Daniel Orifice Fitting | 2d | 2017-03-09 | 2017-03-10 | 56 | 12d |
| 253 | 3.4.2.3 | Manual isolation valves | 1d | 2017-03-09 | 2017-03-09 | 56 | 13d |
| 254 | 3.4.2.4 | Level indicator, sight glass | 1d | 2017-03-09 | 2017-03-09 | 56 | 13d |
| 255 | 3.4.2.5 | Level control valve | 2d | 2017-03-09 | 2017-03-10 | 56 | 12d |
| 256 | 3.4.2.6 | Pressure guages | 7d | 2017-03-09 | 2017-03-15 | 56 | 7d |
| 257 | 3.4.2.7 | Relief valves | 7d | 2017-03-09 | 2017-03-15 | 56 | 7d |
| 258 | 3.4.2.8 | Other Device | 1d | 2017-03-09 | 2017-03-09 | 56 | 13d |
| 259 | 3.4.3 | **LP Separator** | 7d | 2017-03-09 | 2017-03-15 |  | 7d |
| 260 | 3.4.3.1 | Manual isolation valves | 1d | 2017-03-09 | 2017-03-09 | 56 | 13d |
| 261 | 3.4.3.2 | Level indicator, sight glass | 1d | 2017-03-09 | 2017-03-09 | 56 | 13d |
| 262 | 3.4.3.3 | Level control valve | 2d | 2017-03-09 | 2017-03-10 | 56 | 12d |
| 263 | 3.4.3.4 | Pressure guages | 7d | 2017-03-09 | 2017-03-15 | 56 | 7d |
| 264 | 3.4.3.5 | Relief valves | 7d | 2017-03-09 | 2017-03-15 | 56 | 7d |
| 265 | 3.4.3.6 | Othe device | 1d | 2017-03-09 | 2017-03-09 | 56 | 13d |
| 266 | 3.4.4 | **Surge Vessel** | 7d | 2017-03-09 | 2017-03-15 |  | 7d |
| 267 | 3.4.4.1 | Manual isolation valves | 1d | 2017-03-09 | 2017-03-09 | 56 | 13d |
| 268 | 3.4.4.2 | Level indicator, sight glass | 1d | 2017-03-09 | 2017-03-09 | 56 | 13d |
| 269 | 3.4.4.3 | Level control valve | 2d | 2017-03-09 | 2017-03-10 | 56 | 12d |
| 270 | 3.4.4.4 | Pressure guages | 7d | 2017-03-09 | 2017-03-15 | 56 | 7d |
| 271 | 3.4.4.5 | Relief valves | 7d | 2017-03-09 | 2017-03-15 | 56 | 7d |
| 272 | 3.4.4.6 | Pump suction header | 1d | 2017-03-09 | 2017-03-09 | 56 | 13d |
| 273 | 3.4.4.7 | SV recirculation system | 1d | 2017-03-09 | 2017-03-09 | 56 | 13d |

| ID | WBS | Task | Duration | Start | Finish | Predecessors | Total slack |
| --- | --- | --- | --- | --- | --- | --- | --- |
| 274 | 3.4.5 | **FLKO Vessel** | 1d | 2017-03-09 | 2017-03-09 |  | 13d |
| 275 | 3.4.5.1 | Manual isolation valves | 1d | 2017-03-09 | 2017-03-09 | 56 | 13d |
| 276 | 3.4.5.2 | Level indicator, sight glass | 1d | 2017-03-09 | 2017-03-09 | 56 | 13d |
| 277 | 3.4.5.3 | Level control valve | 1d | 2017-03-09 | 2017-03-09 | 56 | 13d |
| 278 | 3.4.5.4 | Other device | 1d | 2017-03-09 | 2017-03-09 | 56 | 13d |
| 279 | 3.5 | **Export Pumps & Metering** | 1d | 2017-03-09 | 2017-03-09 |  | 13d |
| 280 | 3.5.1 | **EP1** | 1d | 2017-03-09 | 2017-03-09 |  | 13d |
| 281 | 3.5.1.1 | Visual checks | 1d | 2017-03-09 | 2017-03-09 | 56 | 13d |
| 282 | 3.5.1.2 | Relief valves | 1d | 2017-03-09 | 2017-03-09 | 56 | 13d |
| 283 | 3.5.1.3 | Other checks | 1d | 2017-03-09 | 2017-03-09 | 56 | 13d |
| 284 | 3.5.2 | **EP 2** | 1d | 2017-03-09 | 2017-03-09 |  | 13d |
| 285 | 3.5.2.1 | Visual checks | 1d | 2017-03-09 | 2017-03-09 | 56 | 13d |
| 286 | 3.5.2.2 | Relief valves | 1d | 2017-03-09 | 2017-03-09 | 56 | 13d |
| 287 | 3.5.2.3 | Other checks | 1d | 2017-03-09 | 2017-03-09 | 56 | 13d |
| 288 | 3.5.3 | **EP 3** | 1d | 2017-03-09 | 2017-03-09 |  | 13d |
| 289 | 3.5.3.1 | Visual checks | 1d | 2017-03-09 | 2017-03-09 | 56 | 13d |
| 290 | 3.5.3.2 | Relief valves | 1d | 2017-03-09 | 2017-03-09 | 56 | 13d |
| 291 | 3.5.3.3 | Other checks | 1d | 2017-03-09 | 2017-03-09 | 56 | 13d |
| 292 | 3.5.4 | **Export Metering** | 1d | 2017-03-09 | 2017-03-09 |  | 13d |
| 293 | 3.5.4.1 | PD Meter 1 | 1d | 2017-03-09 | 2017-03-09 | 56 | 13d |
| 294 | 3.5.4.2 | PD Meter 2 | 1d | 2017-03-09 | 2017-03-09 | 56 | 13d |
| 295 | 3.5.4.3 | Manual Isolation valves | 1d | 2017-03-09 | 2017-03-09 | 56 | 13d |
| 296 | 3.5.4.4 | Water cut Meter | 1d | 2017-03-09 | 2017-03-09 | 56 | 13d |
| 297 | 3.5.4.5 | Other device | 1d | 2017-03-09 | 2017-03-09 | 56 | 13d |

| ID | WBS | Task | Duration | Start | Finish | Predecessors | Total slack |
| --- | --- | --- | --- | --- | --- | --- | --- |
| 298 | 3.6 | **Chemical Injection** | 1d | 2017-03-09 | 2017-03-09 |  | 13d |
| 299 | 3.6.1 | Injection pump and piping | 1d | 2017-03-09 | 2017-03-09 | 56 | 13d |
| 300 | 3.6.2 | Chemical tank & stock | 1d | 2017-03-09 | 2017-03-09 | 56 | 13d |
| 301 | 3.7 | **Gas Headers** | 1d | 2017-03-09 | 2017-03-09 |  | 13d |
| 302 | 3.7.1 | HP PCV | 1d | 2017-03-09 | 2017-03-09 | 56 | 13d |
| 303 | 3.7.2 | HP Header manual valves | 1d | 2017-03-09 | 2017-03-09 | 56 | 13d |
| 304 | 3.7.3 | LP PCV | 1d | 2017-03-09 | 2017-03-09 | 56 | 13d |
| 305 | 3.7.4 | LP Header manual valves | 1d | 2017-03-09 | 2017-03-09 | 56 | 13d |
| 306 | 3.7.5 | F lare line low point drain | 1d | 2017-03-09 | 2017-03-09 | 56 | 13d |
| 307 | 3.8 | **Flare** | 1d | 2017-03-09 | 2017-03-09 |  | 13d |
| 308 | 3.8.1 | Venturi | 1d | 2017-03-09 | 2017-03-09 | 56 | 13d |
| 309 | 3.8.2 | Flare tip | 1d | 2017-03-09 | 2017-03-09 | 56 | 13d |
| 310 | 3.8.3 | Piping | 1d | 2017-03-09 | 2017-03-09 | 56 | 13d |
| 311 | 3.8.4 | Pilot | 1d | 2017-03-09 | 2017-03-09 | 56 | 13d |
| 312 | 3.8.5 | USM | 1d | 2017-03-09 | 2017-03-09 | 56 | 13d |
| 313 | 3.8.6 | Bundwall integrity | 1d | 2017-03-09 | 2017-03-09 | 56 | 13d |
| 314 | 3.9 | **Station Safeguarding Systems** | 1d | 2017-03-09 | 2017-03-09 |  | 13d |
| 315 | 3.9.1 | Robertshaw Panel | 1d | 2017-03-09 | 2017-03-09 | 56 | 13d |
| 316 | 3.9.2 | **Amot / Trip switches** | 1d | 2017-03-09 | 2017-03-09 |  | 13d |
| 317 | 3.9.2.1 | HP PSHH | 1d | 2017-03-09 | 2017-03-09 | 56 | 13d |
| 318 | 3.9.2.2 | LP PSHH | 1d | 2017-03-09 | 2017-03-09 | 56 | 13d |
| 319 | 3.9.2.3 | SV PSHH | 1d | 2017-03-09 | 2017-03-09 | 56 | 13d |
| 320 | 3.9.2.4 | Pumpline PSHH | 1d | 2017-03-09 | 2017-03-09 | 56 | 13d |
| 321 | 3.9.2.5 | Pumpline PSLL | 1d | 2017-03-09 | 2017-03-09 | 56 | 13d |
| 322 | 3.9.2.6 | IA PSLL | 1d | 2017-03-09 | 2017-03-09 | 56 | 13d |
| 323 | 3.9.2.7 | Test Sep LSH | 1d | 2017-03-09 | 2017-03-09 | 56 | 13d |
| 324 | 3.9.2.8 | SV LSHH | 1d | 2017-03-09 | 2017-03-09 | 56 | 13d |
| 325 | 3.9.2.9 | FLKO LSHH | 1d | 2017-03-09 | 2017-03-09 | 56 | 13d |
| 326 | 3.9.3 | Fusible plugs | 1d | 2017-03-09 | 2017-03-09 | 56 | 13d |
| 327 | 3.9.4 | QAW valve - instrument gas | 1d | 2017-03-09 | 2017-03-09 | 56 | 13d |
| 328 | 3.9.5 | QAW valve - fuel gas_EP pumps | 1d | 2017-03-09 | 2017-03-09 | 56 | 13d |
| 329 | 3.9.6 | QAW valve - fuel gas_Gas set | 1d | 2017-03-09 | 2017-03-09 | 56 | 13d |
| 330 | 3.9.7 | ESD Call Points | 1d | 2017-03-09 | 2017-03-09 | 56 | 13d |

| ID | WBS | Task | Duration | Start | Finish | Predecessors | Total slack |
| --- | --- | --- | --- | --- | --- | --- | --- |
| 331 | 3.10 | **Instrument & Fuel Gas System** | 1d | 2017-03-09 | 2017-03-09 |  | 13d |
| 332 | 3.10.1 | Piping Check | 1d | 2017-03-09 | 2017-03-09 | 56 | 13d |
| 333 | 3.10.2 | Utility Gas Scrubber | 1d | 2017-03-09 | 2017-03-09 | 56 | 13d |
| 334 | 3.10.3 | Instrument Gas cooler | 1d | 2017-03-09 | 2017-03-09 | 56 | 13d |
| 335 | 3.10.4 | Instrument Gas Scrubber | 1d | 2017-03-09 | 2017-03-09 | 56 | 13d |
| 336 | 3.10.5 | Instrument Gas Header & Distribution | 1d | 2017-03-09 | 2017-03-09 | 56 | 13d |
| 337 | 3.10.6 | Instrument gas filter regulators | 1d | 2017-03-09 | 2017-03-09 | 56 | 13d |
| 338 | 3.10.7 | Relief valves | 1d | 2017-03-09 | 2017-03-09 | 56 | 13d |
| 339 | 3.10.8 | Fuel gas 'Big Joe's | 1d | 2017-03-09 | 2017-03-09 | 56 | 13d |
| 340 | 3.11 | **Power Generation & LV DB** | 1d | 2017-03-09 | 2017-03-09 |  | 13d |
| 341 | 3.11.1 | Diesel Genset | 1d | 2017-03-09 | 2017-03-09 | 56 | 13d |
| 342 | 3.11.2 | Gas Genset | 1d | 2017-03-09 | 2017-03-09 | 56 | 13d |
| 343 | 3.11.3 | LV Distribution Board | 1d | 2017-03-09 | 2017-03-09 | 56 | 13d |
| 344 | 3.11.4 | Station Lighting & Photocell | 1d | 2017-03-09 | 2017-03-09 | 56 | 13d |
| 345 | 3.12 | **Drains System & Saver pit** | 1d | 2017-03-09 | 2017-03-09 |  | 13d |
| 346 | 3.12.1 | Open drains | 1d | 2017-03-09 | 2017-03-09 | 56 | 13d |
| 347 | 3.12.2 | Saver pit | 1d | 2017-03-09 | 2017-03-09 | 56 | 13d |
| 348 | 3.12.3 | CP Pumps | 1d | 2017-03-09 | 2017-03-09 | 56 | 13d |
| 349 | 3.12.4 | Sampling point | 1d | 2017-03-09 | 2017-03-09 | 56 | 13d |
| 350 | 3.13 | **Cathodic Protection** | 1d | 2017-03-09 | 2017-03-09 |  | 13d |
| 351 | 3.13.1 | CP Transformer | 1d | 2017-03-09 | 2017-03-09 | 56 | 13d |
| 352 | 3.13.2 | CP cables and connections | 1d | 2017-03-09 | 2017-03-09 | 56 | 13d |
| 353 | 3.13.3 | Ground bed | 1d | 2017-03-09 | 2017-03-09 | 56 | 13d |
| 354 | 3.14 | **Station Civil Structures** | 1d | 2017-03-09 | 2017-03-09 |  | 13d |
| 355 | 3.14.1 | Guards hut & Toilets | 1d | 2017-03-09 | 2017-03-09 | 56 | 13d |
| 356 | 3.14.2 | Water tank and mains distribution | 1d | 2017-03-09 | 2017-03-09 | 56 | 13d |
| 357 | 3.14.3 | Pump House and Gantry Cranes | 1d | 2017-03-09 | 2017-03-09 | 56 | 13d |
| 358 | 3.14.4 | Generator House | 1d | 2017-03-09 | 2017-03-09 | 56 | 13d |

| ID | WBS | Task | Duration | Start | Finish | Predecessors | Total slack |
| --- | --- | --- | --- | --- | --- | --- | --- |
| 359 | 3.15 | **Chemical Shed** | 1d | 2017-03-09 | 2017-03-09 |  | 13d |
| 360 | 3.15.1 | Building state | 1d | 2017-03-09 | 2017-03-09 | 56 | 13d |
| 361 | 3.15.2 | Inventory | 1d | 2017-03-09 | 2017-03-09 | 56 | 13d |
| 362 | 3.15.3 | Validity & certification | 1d | 2017-03-09 | 2017-03-09 | 56 | 13d |
| 363 | 3.15.4 | SHOC Cards | 1d | 2017-03-09 | 2017-03-09 | 56 | 13d |
| 364 | 3.16 | **Delivery & trunklines** | 1d | 2017-03-09 | 2017-03-09 |  | 13d |
| 365 | 3.16.1 | Pipeline integrity | 1d | 2017-03-09 | 2017-03-09 | 56 | 13d |
| 366 | 3.16.2 | De-isolation status | 1d | 2017-03-09 | 2017-03-09 | 56 | 13d |
| 367 | 3.17 | **Fire Hut & Fire fighting equipment** | 1d | 2017-03-09 | 2017-03-09 |  | 13d |
| 368 | 3.17.1 | Building state | 1d | 2017-03-09 | 2017-03-09 | 56 | 13d |
| 369 | 3.17.2 | Inventory | 1d | 2017-03-09 | 2017-03-09 | 56 | 13d |
| 370 | 3.17.3 | Validity & certification | 1d | 2017-03-09 | 2017-03-09 | 56 | 13d |
| 371 | 3.18 | **Spill Response Caravan** | 1d | 2017-03-09 | 2017-03-09 |  | 13d |
| 372 | 3.18.1 | Building state | 1d | 2017-03-09 | 2017-03-09 | 56 | 13d |
| 373 | 3.18.2 | Inventory | 1d | 2017-03-09 | 2017-03-09 | 56 | 13d |
| 374 | 3.18.3 | Validity & certification | 1d | 2017-03-09 | 2017-03-09 | 56 | 13d |
| 375 | 3.19 | **IT & Communication quipment** | 1d | 2017-03-09 | 2017-03-09 |  | 13d |
| 376 | 3.19.1 | IT checks | 1d | 2017-03-09 | 2017-03-09 | 56 | 13d |
| 377 | 3.20 | **Station Environment & Fencing** | 1d | 2017-03-09 | 2017-03-09 |  | 13d |
| 378 | 3.20.1 | Main Access road | 1d | 2017-03-09 | 2017-03-09 | 56 | 13d |
| 379 | 3.20.2 | Wellhead roads | 1d | 2017-03-09 | 2017-03-09 | 56 | 13d |
| 380 | 3.20.3 | In-plot roads | 1d | 2017-03-09 | 2017-03-09 | 56 | 13d |
| 381 | 3.20.4 | Grass cutting | 1d | 2017-03-09 | 2017-03-09 | 56 | 13d |
| 382 | 3.20.5 | Horticulture & trees | 1d | 2017-03-09 | 2017-03-09 | 56 | 13d |
| 383 | 3.20.6 | Station Fence & Access Control | 1d | 2017-03-09 | 2017-03-09 | 56 | 13d |
| 384 | 3.20.7 | Boards, notices, flags & signage | 1d | 2017-03-09 | 2017-03-09 | 56 | 13d |
| 385 | 3.20.8 | Emergency escape gates | 1d | 2017-03-09 | 2017-03-09 | 56 | 13d |

| ID | WBS | Task | Duration | Start | Finish | Predecessors | Total slack |
| --- | --- | --- | --- | --- | --- | --- | --- |
| 386 | 3.21 | **Instrument Air project equipment** | 14d | 2017-03-09 | 2017-03-22 |  | 0d |
| 387 | 3.21.1 | Project team assessment | 14d | 2017-03-09 | 2017-03-22 | 56 | 0d |
| 388 | 4 | **Integrity Assurance Restoration** | 14d | 2017-03-01 | 2017-03-14 |  | 8d |
| 389 | 4.1 | Close any IA records gaps - check for expired MoCs, deviations, FSR etc | 7d | 2017-03-01 | 2017-03-07 | 32 | 15d |
| 390 | 4.2 | Wells - APM, Ops-WIT etc | 4d | 2017-03-01 | 2017-03-04 | 32 | 18d |
| 391 | 4.3 | FIMS - flowlines | 7d | 2017-03-01 | 2017-03-07 | 32 | 15d |
| 392 | 4.4 | PVRV Status | 3d | 2017-03-01 | 2017-03-03 | 32 | 19d |
| 393 | 4.5 | Piping UT status | 14d | 2017-03-01 | 2017-03-14 | 32 | 8d |
| 394 | 4.6 | Desanding | 2d | 2017-03-01 | 2017-03-02 | 32 | 20d |
| 395 | 4.7 | Delivery & Trunklines status | 3d | 2017-03-01 | 2017-03-03 | 32 | 19d |
| 396 | 4.8 | ESD Test status | 1d | 2017-03-01 | 2017-03-01 | 32 | 21d |
| 397 | 4.9 | EX-rating inspection | 2d | 2017-03-01 | 2017-03-02 | 32 | 20d |
| 398 | 4.10 | Earth Bonding survey | 3d | 2017-03-01 | 2017-03-03 | 32 | 19d |
| 399 | 5 | **HSE Readiness** | 2.5d? | 2017-02-27 | 2017-03-01 |  | 21d |
| 400 | 5.1 | Env Compliance Monitoring status | 1d? | 2017-03-01 | 2017-03-01 | 32 | 21d |
| 401 | 5.2 | ER drills & other HSE requirements | 1d? | 2017-03-01 | 2017-03-01 | 32 | 21d |
| 402 | 5.3 | Permits & Consents in-place | 1d? | 2017-03-01 | 2017-03-01 | 32 | 21d |
| 403 | 5.4 | Access control briefing materials & facilities in place | 1d? | 2017-02-27 | 2017-02-28 | 5 | 22.5d |
| 404 | 5.5 | DPR Board, Flags, signages and caution notices, boards | 1d? | 2017-02-27 | 2017-02-28 | 5 | 22.5d |
| 405 | 5.6 | HAC, Noise map and windsock in place | 1d? | 2017-02-27 | 2017-02-28 | 5 | 22.5d |
| 406 | 5.7 | DFAs, AEDs and Medical Tier-2 arranged | 1d? | 2017-02-27 | 2017-02-28 | 5 | 22.5d |
| 407 | 5.8 | In-plant bunds (diesel / chemical tank) | 1d? | 2017-02-27 | 2017-02-28 | 5 | 22.5d |
| 408 | 5.9 | Other HSE checks | 1d? | 2017-02-27 | 2017-02-28 | 5 | 22.5d |
| 409 | 6 | **Maintenance Readiness** | 1d? | 2017-03-01 | 2017-03-01 |  | 21d |
| 410 | 6.1 | CMMS update and activation (PMs) in SAP | 1d | 2017-03-01 | 2017-03-01 | 32 | 21d |
| 411 | 6.2 | Asset Register verification & update | 1d? | 2017-03-01 | 2017-03-01 | 32 | 21d |

| ID | WBS | Task | Type | Duration | Start | Finish | Predecessors | Total slack |
| --- | --- | --- | --- | --- | --- | --- | --- | --- |
| 412 | 7 | **Operations Management System** |  | 1d? | 2017-02-27 | 2017-02-28 |  | 22.5d |
| 413 | 7.1 | **Consumables** |  | 1d? | 2017-02-27 | 2017-02-28 |  | 22.5d |
| 414 | 7.1.1 | 1-month stock of lubes and chemicals |  | 1d | 2017-02-27 | 2017-02-28 | 5 | 22.5d |
| 415 | 7.1.2 | Stationery and notebooks |  | 1d? | 2017-02-27 | 2017-02-28 | 5 | 22.5d |
| 416 | 7.1.3 | RPI consumables |  | 1d? | 2017-02-27 | 2017-02-28 | 5 | 22.5d |
| 417 | 7.1.4 | Other consumable |  | 1d? | 2017-02-27 | 2017-02-28 | 5 | 22.5d |
| 418 | 7.2 | **Manpower & Service contracts** |  | 1d? | 2017-02-27 | 2017-02-28 |  | 22.5d |
| 419 | 7.2.1 | Stn Attendants contract status |  | 1d? | 2017-02-27 | 2017-02-28 | 5 | 22.5d |
| 420 | 7.2.2 | Prod Support contract status |  | 1d? | 2017-02-27 | 2017-02-28 | 5 | 22.5d |
| 421 | 7.2.3 | Grass cutting & horticulture contracts status |  | 1d? | 2017-02-27 | 2017-02-28 | 5 | 22.5d |
| 422 | 7.2.4 | Wellhead and ROW surveillance contract status |  | 1d? | 2017-02-27 | 2017-02-28 | 5 | 22.5d |
| 423 | 7.2.5 | Other personnel |  | 1d? | 2017-02-27 | 2017-02-28 | 5 | 22.5d |
| 424 | 7.3 | **Documents and Registers** |  | 1d? | 2017-02-27 | 2017-02-28 |  | 22.5d |
| 425 | 7.3.1 | Check and update any expired Tier-1 docs |  | 1d? | 2017-02-27 | 2017-02-28 | 5 | 22.5d |
| 426 | 7.3.2 | Check and update VT and other OI docs |  | 1d? | 2017-02-27 | 2017-02-28 | 5 | 22.5d |
| 427 | 7.3.3 | Check and update LOLC, LOTO and isolation registers in prep for start up |  | 1d? | 2017-02-27 | 2017-02-28 | 5 | 22.5d |
| 428 | 7.3.4 | Ensure FLM logs, Passing valves, Temporary equipment and Fault registers etc in place |  | 1d? | 2017-02-27 | 2017-02-28 | 5 | 22.5d |
| 429 | 7.3.5 | Other docs |  | 1d? | 2017-02-27 | 2017-02-28 | 5 | 22.5d |
| 430 | 8 | **Ready For Start Up** |  | 1d? | 2017-03-23 | 2017-03-23 |  | 0d |
| 431 | 8.1 | Conduct pre-start up checklist |  | 1d? | 2017-03-23 | 2017-03-23 | 222 | 21.95d |
| 432 | 8.2 | Review start up procedure & start up on paper |  | 1d? | 2017-03-23 | 2017-03-23 | 222 | 21.95d |
| 433 | 8.3 | SoF - prepare and get sign-off |  | 1d? | 2017-03-23 | 2017-03-23 | 222, 388, 399, 409, 412 | 0d |
| 434 | 9 | **Start Up and Ramp Up** |  | 0.95d? | 2017-03-24 | 2017-03-24 |  | 0d |
| 435 | 9.1 | Conduct oil spill and fire drills |  | 0.15d | 2017-03-24 | 2017-03-24 | 433 | 0d |
| 436 | 9.2 | Start Up Obele flowstation on minimum inflow / hi GOR |  | 0.5d? | 2017-03-24 | 2017-03-24 | 435 | 0d |
| 437 | 9.3 | Test safeguarding devices |  | 0.1d? | 2017-03-24 | 2017-03-24 | 436 | 0d |
| 438 | 9.4 | Conduct ESD Test |  | 0.1d? | 2017-03-24 | 2017-03-24 | 437 | 0d |
| 439 | 9.5 | Re-start Obele flowstation |  | 0.1d | 2017-03-24 | 2017-03-24 | 438 | 0d |
| 440 | 10 | Commence export from Obele FS | milestone | 0d | 2017-03-24 | 2017-03-24 | 439 | 0d |

| ID | WBS | Task | Duration | Start | Finish | Predecessors | Total slack | Free slack |
| --- | --- | --- | --- | --- | --- | --- | --- | --- |
| 441 | 11 | **Complete Cat 'B' items and AAR** | 21d? | 2017-03-24 | 2017-04-14 |  | 0d |  |
| 442 | 11.1 | Ramp up Obele production | 7d | 2017-03-24 | 2017-03-31 | 440 | 13d | 0d |
| 443 | 11.2 | Complete Cat 'B' items | 21d | 2017-03-24 | 2017-04-14 | 440 | 0d |  |
| 444 | 11.3 | Conduct after-action-review AAR | 1d? | 2017-03-31 | 2017-04-01 | 442 | 13d |  |
