# Otumara T3 R02

Schedule from MS Project, 2017-02-01 to 2017-09-28, status date 2017-07-21, A marks actual dates.
Shell

## Calendars

- Standard: Mon-Fri 08:00-12:00, 13:00-17:00; Sat-Sun off.

## Resources

| Resource |
| --- |
| Nkesi |
| All |
| FEED Office |
| Obong |
| Hassan |
| Alaka |
| Eguono |
| PUM |
| Rasheed |
| Shade |

## Schedule

| ID | WBS | Task | Type | Duration | Start | Finish | Predecessors | Complete | Remaining | Total slack | Free slack | Constraint | Deadline | Resources | Work | Actual work | Text1 |
| --- | --- | --- | --- | --- | --- | --- | --- | --- | --- | --- | --- | --- | --- | --- | --- | --- | --- |
| 1 | 1 | **Imo 2 and 3 Re-routing Project** |  | 172d | 2017-02-01 A | 2017-09-28 |  | 28% | 123.04d | -30d | 0d |  | 2014-03-31 |  | 2840h | 1080h |  |
| 2 | 1.1 | **Project Management** |  | 108d | 2017-02-01 A | 2017-06-30 A |  | 100% |  |  |  |  |  |  | 424h | 424h |  |
| 3 | 1.1.1 | Initial feasibility checks |  | 30d | 2017-02-01 A | 2017-03-14 A |  | 100% |  |  |  | start no earlier than 2017-02-01 |  | Nkesi | 240h | 240h |  |
| 4 | 1.1.2 | Engage and build project team |  | 8d | 2017-06-21 A | 2017-06-30 A |  | 100% |  |  |  | finish no earlier than 2014-01-15 |  | Obong | 64h | 64h |  |
| 5 | 1.1.3 | Get existing T3 documentation - PEFS, HAZOP, commissioning information etc |  | 14d | 2017-05-30 A | 2017-06-16 A |  | 100% |  |  |  |  |  | Hassan | 112h | 112h |  |
| 6 | 1.1.4 | Hold kick off meeting |  | 1d | 2017-06-14 A | 2017-06-14 A |  | 100% |  |  |  | start no earlier than 2014-01-15 |  | Obong | 8h | 8h |  |
| 7 | 1.2 | **Concept Generation and Selection** |  | 19d | 2017-07-05 A | 2017-07-31 A |  | 100% |  |  |  |  |  |  | 248h | 248h |  |
| 8 | 1.2.1 | Concepts brainstorming session |  | 7d | 2017-07-05 A | 2017-07-13 A |  | 100% |  |  |  | start no earlier than 2017-07-05 |  | All | 56h | 56h |  |
| 9 | 1.2.2 | Concepts evaluation, ranking and selection |  | 2d | 2017-07-12 A | 2017-07-13 A |  | 100% |  |  |  | start no earlier than 2017-07-12 |  | All | 16h | 16h |  |
| 10 | 1.2.3 | Conduct site visit, scope works and draft schedule |  | 1d | 2017-07-20 A | 2017-07-20 A | 9 | 100% |  |  |  | start no earlier than 2017-07-20 |  | All | 8h | 8h |  |
| 11 | 1.2.4 | Get initial cost estimate and schedule |  | 7d | 2017-07-21 A | 2017-07-31 A | 10 | 100% |  |  |  |  |  | Eguono | 56h | 56h | Delayed |
| 12 | 1.2.5 | Conduct hydraulics, Ops Env checks, flow assurance checks & simulations |  | 14d | 2017-07-05 A | 2017-07-24 A | 8SS | 100% |  |  |  |  |  | Alaka | 112h | 112h |  |
| 13 | 1.3 | **FID and Approvals** |  | 18d | 2017-07-25 A | 2017-08-17 |  | 97% | 0.55d | 0d |  |  |  |  | 408h | 400h |  |
| 14 | 1.3.1 | Prepare management proposal (GIP) |  | 7d | 2017-07-25 A | 2017-08-02 A | 12 | 100% |  |  |  |  |  | Obong | 56h | 56h | On schedule |
| 15 | 1.3.2 | FID: Get management approval to proceed on concept with total estimated cost and schedule, get account-to-charge | milestone | 7d | 2017-08-01 A | 2017-08-09 A | 11 | 100% |  |  |  |  |  | PUM | 56h | 56h | next week |
| 16 | 1.3.3 | Conduct Process Safety Review:HAZOP? |  | 10d | 2017-07-25 A | 2017-08-07 A | 12 | 100% |  |  |  |  |  | Alaka; Hassan | 160h | 160h | On schedule |
| 17 | 1.3.4 | Get MoC approval (if required) |  | 8d | 2017-08-08 A | 2017-08-17 A | 16 | 100% |  |  |  |  |  | Hassan; Alaka | 128h | 128h | Next week |
| 18 | 1.3.5 | Update the Integrated Activity Plan to capture deferments |  | 1d | 2017-08-01 | 2017-08-01 | 11 |  |  | -871d | 0d |  |  | PUM | 8h |  | Next week |
| 19 | 1.4 | **Detailed Engineering (DIY)** |  | 8d | 2017-07-21 A | 2017-08-01 |  | 3% | 7.77d | -7d | 0d |  |  |  | 280h | 8h |  |
| 20 | 1.4.1 | Issue work request to Asset Engineering |  | 1d | 2017-07-21 A | 2017-07-21 A | 10 | 100% |  |  |  |  |  | PUM | 8h | 8h | Complete |
| 21 | 1.4.2 | Test Line Engineering Imo 2 FS |  | 7d | 2017-07-24 | 2017-08-01 | 20 |  |  | -878d | 0d |  |  | Eguono | 56h |  | Delayed |
| 22 | 1.4.3 | Test Line Engineering Imo 3 FS |  | 7d | 2017-07-24 | 2017-08-01 | 20 |  |  | -878d | 0d |  |  | Eguono | 56h |  | Delayed |
| 23 | 1.4.4 | Imo 2 bulk line Engineering |  | 7d | 2017-07-24 | 2017-08-01 | 20 |  |  | -885d | 0d |  |  | Eguono | 56h |  | Delayed |
| 24 | 1.4.5 | Imo 3 bulk lines Engineering |  | 7d | 2017-07-24 | 2017-08-01 | 20 |  |  | -885d | 0d |  |  | Eguono | 56h |  | Delayed |
| 25 | 1.4.6 | Imo 2 Gas set ESDV bypass Engineering |  | 1d | 2017-07-24 | 2017-07-24 | 20 |  |  | -865d | 0d |  |  | Eguono | 8h |  | Delayed |
| 26 | 1.4.7 | Detailed Engineering Verification & Approvals |  | 5d | 2017-07-24 | 2017-07-28 | 21SS |  |  | -876d | 0d |  |  | Rasheed | 40h |  | Delayed |

Notes:
- 12: Completed 27th July. Imo 3 good for two 6" lines and one 4" while Imo 2 needs one 6" in addition to the two 4". This is to reduce backpressure FTHP effect on the wells due to the distance
- 16: Need red line mark up and availability of Tas, Aug week 1
- 17: set for 10th Aug

| ID | WBS | Task | Duration | Start | Finish | Predecessors | Total slack | Free slack | Constraint | Resources | Work | Text1 |
| --- | --- | --- | --- | --- | --- | --- | --- | --- | --- | --- | --- | --- |
| 27 | 1.5 | **Construction & Execution** | 23d | 2017-07-31 | 2017-08-30 |  | -898d | 0d |  |  | 872h |  |
| 28 | 1.5.1 | Imo 1 Integrity Checks & Fixes | 10d | 2017-08-10 | 2017-08-23 | 15 | -896d | 0d | start no earlier than 2017-07-19 | Obong | 80h | Next week |
| 29 | 1.5.2 | Imo 2 Gas set ESDV modification | 7d | 2017-07-31 | 2017-08-08 | 26 | -876d | 0d | start no earlier than 2017-07-19 | Eguono | 56h | next week |
| 30 | 1.5.3 | **Imo 2 Test Line** | 7d | 2017-08-02 | 2017-08-10 |  | -878d | 0d |  |  | 168h |  |
| 31 | 1.5.3.1 | Construct and installation | 7d | 2017-08-02 | 2017-08-10 | 21 | -878d | 0d |  | Eguono | 56h | next week |
| 32 | 1.5.3.2 | Hydrotesting and Radiography | 7d | 2017-08-02 | 2017-08-10 | 21 | -878d | 0d |  | Eguono | 56h | next week |
| 33 | 1.5.3.3 | Other works | 7d | 2017-08-02 | 2017-08-10 | 21 | -878d | 0d |  | Eguono | 56h | next week |
| 34 | 1.5.4 | **Imo 2 Bulk Lines** | 14d | 2017-08-02 | 2017-08-21 |  | -885d | 0d |  |  | 192h |  |
| 35 | 1.5.4.1 | Construct and installation | 14d | 2017-08-02 | 2017-08-21 | 23 | -885d | 0d |  | Eguono | 112h | next week |
| 36 | 1.5.4.2 | Hydrotesting and Radiography | 3d | 2017-08-02 | 2017-08-04 | 23 | -874d | 0d |  | Eguono | 24h | next week |
| 37 | 1.5.4.3 | Other works | 7d | 2017-08-02 | 2017-08-10 | 23 | -878d | 0d |  | Eguono | 56h | next week |
| 38 | 1.5.5 | **Imo 2 Shutdown Scope** | 9d | 2017-08-18 | 2017-08-30 |  | -912d | 0d |  |  | 32h |  |
| 39 | 1.5.5.1 | Construction of tie-in spools | 7d | 2017-08-18 | 2017-08-28 | 17 | -912d | 0d |  |  |  |  |
| 40 | 1.5.5.2 | Tie-in (piping, CP etc) | 2d | 2017-08-29 | 2017-08-30 | 39 | -892d | 0d |  | Eguono | 16h |  |
| 41 | 1.5.5.3 | Imo 2 FS Isolation | 2d | 2017-08-29 | 2017-08-30 | 39 | -912d | 0d |  | Hassan | 16h |  |
| 42 | 1.5.6 | **Imo 3 Test Line** | 7d | 2017-08-02 | 2017-08-10 |  | -878d | 0d |  |  | 168h |  |
| 43 | 1.5.6.1 | Construct and installation | 7d | 2017-08-02 | 2017-08-10 | 22 | -878d | 0d |  | Eguono | 56h | next week |
| 44 | 1.5.6.2 | Hydrotesting and Radiography | 7d | 2017-08-02 | 2017-08-10 | 22 | -878d | 0d |  | Eguono | 56h | next week |
| 45 | 1.5.6.3 | Other works | 7d | 2017-08-02 | 2017-08-10 | 22 | -878d | 0d |  | Eguono | 56h | next week |
| 46 | 1.5.7 | **Imo 3 Bulk Lines** | 14d | 2017-08-02 | 2017-08-21 |  | -885d | 0d |  |  | 144h |  |
| 47 | 1.5.7.1 | Construct and installation | 14d | 2017-08-02 | 2017-08-21 | 24 | -885d | 0d |  | Eguono | 112h | next week |
| 48 | 1.5.7.2 | Hydrotesting and Radiography | 2d | 2017-08-02 | 2017-08-03 | 24 | -873d | 0d |  | Eguono | 16h | next week |
| 49 | 1.5.7.3 | Other works | 2d | 2017-08-02 | 2017-08-03 | 24 | -873d | 0d |  | Eguono | 16h | next week |
| 50 | 1.5.8 | **Imo 3Shutdown Scope** | 9d | 2017-08-18 | 2017-08-30 |  | -901d | 0d |  |  | 32h |  |
| 51 | 1.5.8.1 | Construction of tie-in spools | 7d | 2017-08-18 | 2017-08-28 | 17 | -901d | 0d |  |  |  |  |
| 52 | 1.5.8.2 | Tie-in (piping, CP etc) | 2d | 2017-08-29 | 2017-08-30 | 51 | -894d | 0d |  | Eguono | 16h |  |
| 53 | 1.5.8.3 | Imo 3 FS Isolation | 2d | 2017-08-29 | 2017-08-30 | 51 | -901d | 0d |  | Hassan | 16h |  |

| ID | WBS | Task | Duration | Start | Finish | Predecessors | Total slack | Free slack | Constraint | Resources | Work | Text1 |
| --- | --- | --- | --- | --- | --- | --- | --- | --- | --- | --- | --- | --- |
| 54 | 1.6 | **SCE Assurance** | 2d | 2017-08-24 | 2017-08-25 |  | -889d | 0d |  |  | 32h |  |
| 55 | 1.6.1 | Master Shutdown Valves (MSDVs) at Imo 1 | 2d | 2017-08-24 | 2017-08-25 | 28 | -889d | 0d |  | Obong | 16h |  |
| 56 | 1.6.2 | Relief Valves | 2d | 2017-08-24 | 2017-08-25 | 28 | -889d | 0d |  | Obong | 16h |  |
| 57 | 1.7 | **HSSE Assessments and Documentation** | 2d | 2017-08-31 | 2017-09-01 |  | -894d | 0d |  |  | 32h |  |
| 58 | 1.7.1 | Update of HAC, Station Layout and Station Bill if necessary | 2d | 2017-08-31 | 2017-09-01 | 41 | -894d | 0d |  | PUM | 16h |  |
| 59 | 1.7.2 | HSSE inspection and assessment | 2d | 2017-08-31 | 2017-09-01 | 41 | -894d | 0d |  | Shade | 16h |  |
| 60 | 1.8 | **Personnel Training & Awareness** | 5d | 2017-08-31 | 2017-09-06 |  | -897d | 0d |  |  | 48h |  |
| 61 | 1.8.1 | Training session on operating modes and control narrative | 1d | 2017-08-31 | 2017-08-31 | 41 | -893d | 0d |  | Alaka | 8h |  |
| 62 | 1.8.2 | Go-live campaign | 5d | 2017-08-31 | 2017-09-06 | 41 | -897d | 0d |  | Obong | 40h |  |
| 63 | 1.9 | **Maintenance Readiness** | 30d | 2017-08-18 | 2017-09-28 |  | -913d | 0d |  |  |  |  |
| 64 | 1.9.1 | Asset Register verification & update | 30d | 2017-08-18 | 2017-09-28 | 17 | -913d | 0d |  |  |  |  |
| 65 | 1.9.2 | CMMS update and activation (PMs) in SAP | 30d | 2017-08-18 | 2017-09-28 | 17 | -913d | 0d |  |  |  |  |
| 66 | 1.10 | **Operations Management Systems Update** | 35d | 2017-08-10 | 2017-09-27 |  | -912d | 0d |  |  | 376h |  |
| 67 | 1.10.1 | Update Plant Operating Manuals - Start up procedure (Imo 1) | 24d | 2017-08-18 | 2017-09-20 | 17 | -907d | 0d | start no earlier than 2017-07-19 | Obong | 192h |  |
| 68 | 1.10.2 | Update / mark up as-built drawings (Imo2 & 3) | 2d | 2017-08-31 | 2017-09-01 | 41 | -894d | 0d |  | Hassan | 16h |  |
| 69 | 1.10.3 | Update LOLC, FLM logsheet and RATS (where applicable) | 20d | 2017-08-31 | 2017-09-27 | 41 | -912d | 0d |  | Hassan | 160h |  |
| 70 | 1.10.4 | Review and update chemical injection rates (Imo 1) | 1d | 2017-08-10 | 2017-08-10 | 28SS | -878d | 0d |  | Hassan | 8h | next week |
| 71 | 1.11 | **Sign Statement of Fitness (SoF)** | 2d | 2017-08-31 | 2017-09-01 |  | -894d | 0d |  |  | 16h |  |
| 72 | 1.11.1 | SoF challenge session with Asset / Operations manager | 2d | 2017-08-31 | 2017-09-01 | 50 | -894d | 0d |  | PUM | 16h |  |
| 73 | 1.12 | **Dynamic Commissioning** | 2d | 2017-08-31 | 2017-09-01 |  | -901d | 0d |  |  | 48h |  |
| 74 | 1.12.1 | Imo 2 Test Line | 1d | 2017-08-31 | 2017-08-31 | 41 | -900d | 0d |  | Obong | 8h |  |
| 75 | 1.12.2 | Imo 2 Bulk Line | 1d | 2017-08-31 | 2017-08-31 | 41, 28 | -900d | 0d |  | Obong | 8h |  |
| 76 | 1.12.3 | Imo 3 Test Line | 1d | 2017-08-31 | 2017-08-31 | 53 | -900d | 0d |  | Obong | 8h |  |
| 77 | 1.12.4 | Imo 3 Bulk Line | 1d | 2017-08-31 | 2017-08-31 | 53, 28 | -901d | 0d |  | Obong | 8h |  |
| 78 | 1.12.5 | Conduct oil spill and fire drills | 1d | 2017-09-01 | 2017-09-01 | 77 | -901d | 0d |  | Obong | 8h |  |
| 79 | 1.12.6 | Conduct ESD test | 1d | 2017-09-01 | 2017-09-01 | 78SS | -901d | 0d |  | Obong | 8h |  |

| ID | WBS | Task | Type | Duration | Start | Finish | Predecessors | Total slack | Free slack | Resources | Work |
| --- | --- | --- | --- | --- | --- | --- | --- | --- | --- | --- | --- |
| 80 | 1.13 | **Hand over to Imo District Operations** |  | 7d | 2017-09-04 | 2017-09-12 |  | -901d | 0d |  | 56h |
| 81 | 1.13.1 | Handover documentation and close out |  | 7d | 2017-09-04 | 2017-09-12 | 73 | -901d | 0d | Rasheed | 56h |
| 82 | 1.13.2 | END | milestone | 0d | 2017-09-12 | 2017-09-12 | 81 | -901d | 0d |  |  |
